# X

Schedule from ProjectLibre, 2024-09-09 to 2024-12-09.

## Calendars

- Padrão: Mon-Fri 08:00-12:00, 13:00-17:00; Sat-Sun off.

## Resources

| Resource | Rate |
| --- | --- |
| Não atribuído |  |
| Diogo | 20 |
| Enzo | 20 |
| Lucas | 20 |
| Thiago | 20 |

## Schedule

| ID | WBS | Task | Duration | Start | Finish | Predecessors | Complete | Baseline start | Baseline finish | Resources |
| --- | --- | --- | --- | --- | --- | --- | --- | --- | --- | --- |
| 1 | 1 | **ProjetoIZZY** | 65.04d? | 2024-09-09 | 2024-12-09 |  | 57% | 2024-09-09 | 2024-12-09 |  |
| 2 | 1.1 | **Prospecção** | 2.75d? | 2024-09-09 | 2024-09-11 |  | 100% | 2024-09-09 | 2024-09-11 |  |
| 3 | 1.1.1 | **PTEC** | 2.75d? | 2024-09-09 | 2024-09-11 |  | 100% | 2024-09-09 | 2024-09-11 |  |
| 4 | 1.1.1.1 | Estudar o domínio de aplicaçao do sistema | 1.25d | 2024-09-09 | 2024-09-10 |  | 100% | 2024-09-09 | 2024-09-10 | Diogo; Enzo; Lucas; Thiago |
| 5 | 1.1.1.2 | Redigir PTE | 1.25d? | 2024-09-09 | 2024-09-10 | 4 | 100% | 2024-09-09 | 2024-09-10 | Thiago |
| 6 | 1.1.1.3 | Revisar PTE | 2.75d? | 2024-09-09 | 2024-09-11 | 5 | 100% | 2024-09-09 | 2024-09-11 | Diogo; Enzo; Lucas |
| 7 | 1.1.2 | **Est. Prel. Tam** | 2.25d? | 2024-09-09 | 2024-09-11 |  | 100% | 2024-09-09 | 2024-09-11 |  |
| 8 | 1.1.2.1 | Estimar Tamanho do Projeto | 1d? | 2024-09-09 | 2024-09-09 | 4 | 100% | 2024-09-09 | 2024-09-09 | Enzo |
| 9 | 1.1.2.2 | Revisar Estimar Tamanho do Projeto | 2.25d? | 2024-09-09 | 2024-09-11 | 8 | 100% | 2024-09-09 | 2024-09-11 | Diogo; Enzo; Lucas |
| 10 | 1.2 | **Análise** | 16.62d? | 2024-09-10 | 2024-10-02 |  | 100% | 2024-09-10 | 2024-10-02 |  |
| 11 | 1.2.1 | **DRE** | 10.5d | 2024-09-10 | 2024-09-24 |  | 100% | 2024-09-10 | 2024-09-24 |  |
| 12 | 1.2.1.1 | Levantar Requisitos do Sistema | 7d | 2024-09-10 | 2024-09-19 | 6 | 100% | 2024-09-10 | 2024-09-19 | Diogo; Enzo; Lucas; Thiago |
| 13 | 1.2.1.2 | Redigir DRE | 7.25d | 2024-09-12 | 2024-09-23 | 12 | 100% | 2024-09-12 | 2024-09-23 | Lucas; Thiago |
| 14 | 1.2.1.3 | Revisar DRE | 5.25d | 2024-09-17 | 2024-09-24 | 13 | 100% | 2024-09-17 | 2024-09-24 | Diogo; Enzo |
| 15 | 1.2.2 | **MRB** | 10.62d? | 2024-09-18 | 2024-10-02 |  | 100% | 2024-09-18 | 2024-10-02 |  |
| 16 | 1.2.2.1 | Elaborar MRB | 10.12d? | 2024-09-18 | 2024-10-02 | 14 | 100% | 2024-09-18 | 2024-10-02 | Diogo; Enzo |
| 17 | 1.2.2.2 | Revisar MRB | 5d? | 2024-09-25 | 2024-10-02 | 16 | 100% | 2024-09-25 | 2024-10-02 | Lucas; Thiago |
| 18 | 1.3 | **Planejamento** | 17.25d? | 2024-09-18 | 2024-10-11 |  | 100% | 2024-09-18 | 2024-10-11 |  |
| 19 | 1.3.1 | Desenvolver Plano de Projeto | 13.75d? | 2024-09-18 | 2024-10-07 | 14 | 100% | 2024-09-18 | 2024-10-07 | Diogo; Enzo; Lucas; Thiago |
| 20 | 1.3.2 | Elaborar Estimativa de Tamanho/Esforço | 4.75d? | 2024-09-18 | 2024-09-24 | 14 | 100% | 2024-09-18 | 2024-09-24 | Diogo; Thiago |
| 21 | 1.3.3 | Revisar Est. de Tamanho/Esforço | 4.62d? | 2024-09-18 | 2024-09-25 | 20 | 100% | 2024-09-18 | 2024-09-25 | Enzo; Lucas |
| 22 | 1.3.4 | Elaborar Cronograma | 1d? | 2024-09-18 | 2024-09-19 | 19 | 100% | 2024-09-18 | 2024-09-19 | Thiago |
| 23 | 1.3.5 | Revisar Cronograma | 0.12d? | 2024-09-19 | 2024-09-19 | 22 | 100% | 2024-09-19 | 2024-09-19 | Thiago |
| 24 | 1.3.6 | Elaborar Protótipo | 12.75d? | 2024-09-24 | 2024-10-11 | 14 | 100% | 2024-09-24 | 2024-10-11 | Diogo |

| ID | WBS | Task | Duration | Start | Finish | Predecessors | Complete | Baseline start | Baseline finish | Constraint | Resources |
| --- | --- | --- | --- | --- | --- | --- | --- | --- | --- | --- | --- |
| 25 | 1.4 | **Desenvolvimento** | 17.04d? | 2024-11-04 | 2024-11-27 |  | 20% | 2024-11-04 | 2024-11-27 |  |  |
| 26 | 1.4.1 | **Sprint 1** | 5.75d? | 2024-11-04 | 2024-11-11 |  | 100% | 2024-11-04 | 2024-11-11 |  |  |
| 27 | 1.4.1.1 | **Implementação** | 5.69d? | 2024-11-04 | 2024-11-11 |  | 100% | 2024-11-04 | 2024-11-11 |  |  |
| 28 | 1.4.1.1.1 | Manter Usuários | 3.5d? | 2024-11-04 | 2024-11-07 |  | 100% | 2024-11-04 | 2024-11-07 | start no earlier than 2024-11-04 | Diogo; Enzo; Lucas; Thiago |
| 29 | 1.4.1.1.2 | Realizar Testes | 0.12d | 2024-11-08 | 2024-11-08 | 28 | 100% | 2024-11-08 | 2024-11-08 | start no earlier than 2024-11-08 | Thiago |
| 30 | 1.4.1.1.3 | Manter IZZY's | 1.44d? | 2024-11-08 | 2024-11-11 | 29 | 100% | 2024-11-08 | 2024-11-11 |  | Enzo; Lucas |
| 31 | 1.4.1.1.4 | Realizar Testes | 0.12d? | 2024-11-11 | 2024-11-11 | 30 | 100% | 2024-11-11 | 2024-11-11 | start no earlier than 2024-11-11 | Thiago |
| 32 | 1.4.1.2 | **Gerência de Configuração** | 0.06d? | 2024-11-11 | 2024-11-11 |  | 100% | 2024-11-11 | 2024-11-11 |  |  |
| 33 | 1.4.1.2.1 | Gerar nova Tag de Configuração | 0.06d? | 2024-11-11 | 2024-11-11 | 31 | 100% | 2024-11-11 | 2024-11-11 |  | Thiago |
| 34 | 1.4.2 | **Sprint 2** | 3.59d? | 2024-11-12 | 2024-11-18 |  |  | 2024-11-12 | 2024-11-18 |  |  |
| 35 | 1.4.2.1 | **Implementação** | 3.41d? | 2024-11-12 | 2024-11-18 |  |  | 2024-11-12 | 2024-11-18 |  |  |
| 36 | 1.4.2.1.1 | Manter Atividades | 3.31d? | 2024-11-12 | 2024-11-18 | 33 |  | 2024-11-12 | 2024-11-18 | start no earlier than 2024-11-12 | Diogo; Thiago |
| 37 | 1.4.2.1.2 | Realizar Testes | 0.09d? | 2024-11-18 | 2024-11-18 | 36 |  | 2024-11-18 | 2024-11-18 |  | Enzo; Lucas |
| 38 | 1.4.2.2 | **Monitoramento de Controle** | 0.12d? | 2024-11-18 | 2024-11-18 |  |  | 2024-11-18 | 2024-11-18 |  |  |
| 39 | 1.4.2.2.1 | Atualizar Cronograma | 0.12d? | 2024-11-18 | 2024-11-18 | 37 |  | 2024-11-18 | 2024-11-18 |  | Enzo; Lucas |
| 40 | 1.4.2.3 | **Gerência de Configuração** | 0.06d | 2024-11-18 | 2024-11-18 |  |  | 2024-11-18 | 2024-11-18 |  |  |
| 41 | 1.4.2.3.1 | Gerar nova Tag de Configuração | 0.06d | 2024-11-18 | 2024-11-18 | 39 |  | 2024-11-18 | 2024-11-18 |  | Enzo |
| 42 | 1.4.3 | **Sprint 3** | 3d? | 2024-11-18 | 2024-11-21 |  |  | 2024-11-18 | 2024-11-21 |  |  |
| 43 | 1.4.3.1 | **Implementação** | 3d? | 2024-11-18 | 2024-11-21 |  |  | 2024-11-18 | 2024-11-21 |  |  |
| 44 | 1.4.3.1.1 | Manter Membros de IZZY | 2.5d | 2024-11-18 | 2024-11-20 | 41 |  | 2024-11-18 | 2024-11-20 |  |  |
| 45 | 1.4.3.1.2 | Realizar Testes | 0.5d? | 2024-11-20 | 2024-11-21 | 44 |  | 2024-11-20 | 2024-11-21 |  |  |
| 46 | 1.4.3.1.3 | Relatório de Atividades | 1.25d? | 2024-11-18 | 2024-11-19 | 41 |  | 2024-11-18 | 2024-11-19 |  |  |
| 47 | 1.4.3.1.4 | Realizar Testes | 0.25d? | 2024-11-19 | 2024-11-19 | 46 |  | 2024-11-19 | 2024-11-19 |  |  |
| 48 | 1.4.3.2 | **Monitoramento de Controle** | 1d? | 2024-11-19 | 2024-11-20 |  |  | 2024-11-19 | 2024-11-20 |  |  |
| 49 | 1.4.3.2.1 | Atualizar Cronograma | 1d? | 2024-11-19 | 2024-11-20 | 47 |  | 2024-11-19 | 2024-11-20 |  |  |

| ID | WBS | Task | Duration | Start | Finish | Predecessors | Baseline start | Baseline finish | Constraint |
| --- | --- | --- | --- | --- | --- | --- | --- | --- | --- |
| 50 | 1.4.3.3 | **Gerência de Configuração** | 0.1d | 2024-11-20 | 2024-11-20 |  | 2024-11-20 | 2024-11-20 |  |
| 51 | 1.4.3.3.1 | Gerar nova Tag de Configuração | 0.1d | 2024-11-20 | 2024-11-20 | 49 | 2024-11-20 | 2024-11-20 |  |
| 52 | 1.4.4 | **Sprint 4** | 4.1d? | 2024-11-20 | 2024-11-27 |  | 2024-11-20 | 2024-11-27 |  |
| 53 | 1.4.4.1 | **Implementação** | 3d? | 2024-11-20 | 2024-11-25 |  | 2024-11-20 | 2024-11-25 |  |
| 54 | 1.4.4.1.1 | Relatório de Atividades Atrasadas | 1.88d | 2024-11-20 | 2024-11-22 | 51 | 2024-11-20 | 2024-11-22 |  |
| 55 | 1.4.4.1.2 | Realizar Testes | 0.38d | 2024-11-22 | 2024-11-25 | 54 | 2024-11-22 | 2024-11-25 |  |
| 56 | 1.4.4.1.3 | Relatório de Participação dos Membros | 2.5d? | 2024-11-20 | 2024-11-25 | 51 | 2024-11-20 | 2024-11-25 |  |
| 57 | 1.4.4.1.4 | Realizar Testes | 0.5d? | 2024-11-25 | 2024-11-25 | 56 | 2024-11-25 | 2024-11-25 |  |
| 58 | 1.4.4.2 | **Monitoramento de Controle** | 1d? | 2024-11-25 | 2024-11-26 |  | 2024-11-25 | 2024-11-26 |  |
| 59 | 1.4.4.2.1 | Atualizar Cronograma | 1d? | 2024-11-25 | 2024-11-26 | 57 | 2024-11-25 | 2024-11-26 |  |
| 60 | 1.4.4.3 | **Gerência de Configuração** | 0.1d | 2024-11-26 | 2024-11-27 |  | 2024-11-26 | 2024-11-27 |  |
| 61 | 1.4.4.3.1 | Gerar nova Tag de Configuração | 0.1d | 2024-11-26 | 2024-11-27 | 59 | 2024-11-26 | 2024-11-27 |  |
| 62 | 1.5 | **Fechamento** | 8d? | 2024-11-27 | 2024-12-09 |  | 2024-11-27 | 2024-12-09 |  |
| 63 | 1.5.1 | Apresentação do projeto ao cliente | 2d? | 2024-11-27 | 2024-11-29 | 61 | 2024-11-27 | 2024-11-29 |  |
| 64 | 1.5.2 | Entrega do projeto ao cliente | 2d? | 2024-11-29 | 2024-12-03 | 63 | 2024-11-29 | 2024-12-03 |  |
| 65 | 1.5.3 | Implantação do sistema | 4d? | 2024-12-03 | 2024-12-09 | 64 | 2024-12-03 | 2024-12-09 |  |
| 66 | 1.6 | Finalização | 0d? | 2024-12-09 | 2024-12-09 | 65 | 2024-12-09 | 2024-12-09 | start no earlier than 2024-09-09 |
